# Cronograma de Implementacion

Schedule from MS Project, 2008-12-02 to 2009-01-16, costs in $b, A marks actual dates.

## Calendars

- Estándar: Mon-Fri 09:00-13:00, 15:00-19:00; Sat-Sun off. Exceptions (off unless hours are given): 2008-12-01 to 2008-12-05 08:00-09:00, 2008-12-06 09:00-13:00, 2008-12-08 to 2008-12-12 08:00-09:00, 2008-12-13 09:00-13:00, 2008-12-15 to 2008-12-19 08:00-09:00, 2008-12-20 09:00-13:00, 2008-12-22 to 2008-12-27 20:00-23:00, 2008-12-29 to 2009-01-03 20:00-23:00, 2009-01-05 to 2009-01-10 20:00-23:00, 2009-01-12 to 2009-01-17 20:00-23:00.

## Resources

| Resource | Rate |
| --- | --- |
| Sergio Moreno | 100 |
| Servidor |  |
| Licencias Microsoft |  |
| Sergio Morenoç |  |

## Schedule

| ID | WBS | Task | Duration | Start | Finish | Predecessors | Complete | Remaining | Baseline start | Baseline finish | Baseline duration | Total slack | Free slack | Resources | Work | Actual work | Cost | Actual cost |
| --- | --- | --- | --- | --- | --- | --- | --- | --- | --- | --- | --- | --- | --- | --- | --- | --- | --- | --- |
| 1 | 1 | **DATAWAREHOUSE MENDOCINA-PEDIDOS** | 11.88d? | 2008-12-02 08:00 A | 2009-01-16 23:00 |  | 62% | 4.47d? |  |  |  | 0d |  |  | 148h | 95.53h | 14,800 | 9,553 |
| 2 | 1.1 | **Diseño de la Extraccion de Datos** | 2.88d | 2008-12-02 08:00 A | 2008-12-20 10:00 |  | 79% | 0.6d | 2008-12-02 08:00 | 2008-12-20 11:00 | 3d | 9d |  | Sergio Moreno | 47h | 37.21h | 4,700 | 3,720.83 |
| 3 | 1.1.1 | Configuracion inicial ambiente de desarrollo | 4h | 2008-12-02 08:00 A | 2008-12-05 09:00 A |  | 100% |  | 2008-12-02 08:00 | 2008-12-05 09:00 | 4h |  |  | Sergio Moreno | 4h | 4h | 400 | 400 |
| 4 | 1.1.2 | Maestro de Artículos | 1h | 2008-12-06 09:00 A | 2008-12-06 10:00 A | 3 | 100% |  | 2008-12-06 09:00 | 2008-12-06 10:00 | 1h |  |  | Sergio Moreno | 1h | 1h | 100 | 100 |
| 5 | 1.1.3 | Maestro de Distribuidores | 1h | 2008-12-06 10:00 A | 2008-12-06 11:00 A | 4 | 100% |  | 2008-12-06 10:00 | 2008-12-06 11:00 | 1h |  |  | Sergio Moreno | 1h | 1h | 100 | 100 |
| 6 | 1.1.4 | Maestro de Vendedores | 1h | 2008-12-06 11:00 A | 2008-12-06 12:00 A | 5 | 100% |  | 2008-12-06 11:00 | 2008-12-06 12:00 | 1h |  |  | Sergio Moreno | 1h | 1h | 100 | 100 |
| 7 | 1.1.5 | Maestro de Sabores | 1h | 2008-12-06 12:00 A | 2008-12-06 13:00 A | 6 | 100% |  | 2008-12-06 12:00 | 2008-12-06 13:00 | 1h |  |  | Sergio Moreno | 1h | 1h | 100 | 100 |
| 8 | 1.1.6 | Maestro de Líneas | 1h | 2008-12-08 08:00 A | 2008-12-08 09:00 A | 7 | 100% |  | 2008-12-08 08:00 | 2008-12-08 09:00 | 1h |  |  | Sergio Moreno | 1h | 1h | 100 | 100 |
| 9 | 1.1.7 | Maestro de Distritos | 1h | 2008-12-09 08:00 A | 2008-12-09 09:00 A | 8 | 100% |  | 2008-12-09 08:00 | 2008-12-09 09:00 | 1h |  |  | Sergio Moreno | 1h | 1h | 100 | 100 |
| 10 | 1.1.8 | Maestro de Rutas | 1h | 2008-12-10 08:00 A | 2008-12-10 09:00 A | 9 | 100% |  | 2008-12-10 08:00 | 2008-12-10 09:00 | 1h |  |  | Sergio Moreno | 1h | 1h | 100 | 100 |
| 11 | 1.1.9 | Maestro de Sectores | 1h | 2008-12-11 08:00 A | 2008-12-11 09:00 A | 10 | 100% |  | 2008-12-11 08:00 | 2008-12-11 09:00 | 1h |  |  | Sergio Moreno | 1h | 1h | 100 | 100 |
| 12 | 1.1.10 | Maestro de Clientes | 1h | 2008-12-12 08:00 A | 2008-12-12 09:00 A | 11 | 100% |  | 2008-12-12 08:00 | 2008-12-12 09:00 | 1h |  |  | Sergio Moreno | 1h | 1h | 100 | 100 |
| 13 | 1.1.11 | Maestro Clientes - Precios | 1h | 2008-12-13 09:00 A | 2008-12-13 10:00 A | 12 | 100% |  | 2008-12-13 09:00 | 2008-12-13 10:00 | 1h |  |  | Sergio Moreno | 1h | 1h | 100 | 100 |
| 14 | 1.1.12 | Transaccional de Pedidos | 4h | 2008-12-13 10:00 A | 2008-12-15 09:00 A | 13 | 100% |  | 2008-12-13 10:00 | 2008-12-15 09:00 | 4h |  |  | Sergio Moreno | 4h | 4h | 400 | 400 |
| 15 | 1.1.13 | Transaccional de Visitas Palm | 1h | 2008-12-16 08:00 | 2008-12-16 09:00 | 14 |  |  |  |  |  | 9d | 0d | Sergio Moreno | 1h |  | 100 |  |
| 16 | 1.1.14 | Transaccional de Resumen de Preventa | 1h | 2008-12-17 08:00 | 2008-12-17 09:00 | 15 |  |  |  |  |  | 9d | 0d | Sergio Moreno | 1h |  | 100 |  |
| 17 | 1.1.15 | Transaccional de rechazos de pedidos | 1h | 2008-12-18 08:00 | 2008-12-18 09:00 | 16 |  |  |  |  |  | 9d | 0d | Sergio Moreno | 1h |  | 100 |  |
| 18 | 1.1.16 | Maestro de hojas de ruta | 1h | 2008-12-19 08:00 | 2008-12-19 09:00 | 17 |  |  |  |  |  | 9d | 0d | Sergio Moreno | 1h |  | 100 |  |
| 19 | 1.1.17 | Maestro de empleados | 1h | 2008-12-20 09:00 | 2008-12-20 10:00 | 18 |  |  |  |  |  | 9d |  | Sergio Moreno | 1h |  | 100 |  |
| 20 | 1.1.18 | Maestro de Motivos de Rechazo | 1h | 2008-12-16 08:00 A | 2008-12-16 09:00 A | 19 | 100% |  | 2008-12-16 08:00 | 2008-12-20 11:00 | 6h |  |  | Sergio Moreno | 1h | 1h | 100 | 100 |
| 21 | 1.2 | **Diseño de la Transformacion de Datos** | 5.75d | 2008-12-02 08:00 A | 2008-12-29 22:00 | 20 | 92% | 0.46d | 2008-12-20 11:00 | 2008-12-29 22:00 | 2.75d | 6.12d |  | Sergio Moreno | 46h | 43.84h | 4,600 | 4,384 |
| 22 | 1.2.1 | Dimension de Fecha | 3h | 2008-12-20 11:00 A | 2008-12-22 21:00 A | 2 | 100% |  | 2008-12-20 11:00 | 2008-12-22 21:00 | 3h |  |  | Sergio Moreno | 3h | 3h | 300 | 300 |
| 23 | 1.2.2 | Dimension de Clientes | 6h | 2008-12-22 21:00 A | 2008-12-24 21:00 A | 22 | 100% |  | 2008-12-22 21:00 | 2008-12-24 21:00 | 6h |  |  | Sergio Moreno | 6h | 6h | 600 | 600 |
| 24 | 1.2.3 | Dimension Distrito Ruta Sector | 2h | 2008-12-24 21:00 A | 2008-12-24 23:00 A | 23 | 100% |  | 2008-12-24 21:00 | 2008-12-24 23:00 | 2h |  |  | Sergio Moreno | 2h | 2h | 200 | 200 |
| 25 | 1.2.4 | Dimension Linea Sabor Articulo | 2h | 2008-12-25 20:00 A | 2008-12-25 22:00 A | 24 | 100% |  | 2008-12-25 20:00 | 2008-12-25 22:00 | 2h |  |  | Sergio Moreno | 2h | 2h | 200 | 200 |
| 26 | 1.2.5 | Dimension Distribuidor | 1h | 2008-12-25 22:00 A | 2008-12-25 23:00 A | 25 | 100% |  | 2008-12-25 22:00 | 2008-12-25 23:00 | 1h |  |  | Sergio Moreno | 1h | 1h | 100 | 100 |
| 27 | 1.2.6 | Dimension Estado de pedido | 1h | 2008-12-26 20:00 A | 2008-12-26 21:00 A | 26 | 100% |  | 2008-12-26 20:00 | 2008-12-26 21:00 | 1h |  |  | Sergio Moreno | 1h | 1h | 100 | 100 |
| 28 | 1.2.7 | Dimension Jefe Supervisor Vendedor | 2h | 2008-12-26 21:00 A | 2008-12-26 23:00 | 27 | 80% | 0.4h | 2008-12-26 21:00 | 2008-12-26 23:00 | 2h | 6.75d |  | Sergio Moreno | 2h | 1.6h | 200 | 160 |
| 29 | 1.2.8 | Tabla de Hechos: Pedidos | 5h | 2008-12-27 20:00 A | 2008-12-29 22:00 A | 28 | 100% |  | 2008-12-27 20:00 | 2008-12-29 22:00 | 5h |  |  | Sergio Moreno | 5h | 5h | 500 | 500 |
| 30 | 1.2.9 | Tabla de Hechos: Hojas de Ruta | 2h | 2008-12-02 08:00 A | 2008-12-03 09:00 A | 18 | 100% |  |  |  |  |  |  | Sergio Moreno | 2h | 2h | 200 | 200 |
| 31 | 1.2.10 | Tabla de Hechos: Resumen de Preventa | 2h | 2008-12-02 08:00 A | 2008-12-03 09:00 A | 16 | 100% |  |  |  |  |  |  |  |  |  |  |  |
| 32 | 1.2.11 | Tabla de Hechos: Visitas Palm | 2h | 2008-12-02 08:00 A | 2008-12-03 09:00 A | 15 | 100% |  |  |  |  |  |  |  |  |  |  |  |
| 33 | 1.2.12 | Tabla de Hechos: Rechazos de Pedidos | 2h | 2008-12-19 08:00 | 2008-12-20 10:00 | 17 |  |  |  |  |  | 9d |  |  |  |  |  |  |

Notes:
- 23: hubo un atraso debido a que no se proporciono la informacion correcta en una de las tablas y esto provoco que se tenga que ir nuevamente a hacer el diseno de extraccion de esta nueva tabla
- 24: se tienen algunas dudas que deben ser aclaradas antes del diseno de las dimensiones correspondientes / se evidencio que en los pedidos no se estaba registrando el sector, por lo que se tiene que disenar un proceso adicional de reconstruccion de información historica a traves de iuna tabla adicional que si contiene el sector por fecha, (para la información de aquí atrás), en cuanto a la indformacion generada de aquí adelante, se hablo con el resposable de sistemas para que se corrja la falta de este dato en los pedidos, el mismo se comprometio a corregirlo en la semana del 22 al 27 de diciembre.
- 26: Se esta esperando que en el sistema principal para poder identificar jerarquia de supervisor vs. vendedor
- 27: Existían una duda con un campo repetido (consignación, crédito o facturado) que se aclaró el 27 de diciembre.
- 28: Se esta esperando que en el sistema principal para poder identificar jerarquia de supervisor vs. vendedor

| ID | WBS | Task | Duration | Start | Finish | Predecessors | Complete | Remaining | Baseline start | Baseline finish | Baseline duration | Total slack | Free slack | Resources | Work | Actual work | Cost | Actual cost |
| --- | --- | --- | --- | --- | --- | --- | --- | --- | --- | --- | --- | --- | --- | --- | --- | --- | --- | --- |
| 34 | 1.3 | **Diseño del cargado de datos** | 6.75d? | 2008-12-02 08:00 A | 2009-01-01 21:00 |  | 89% | 0.71d? | 2008-12-29 22:00 | 2009-01-01 23:00 | 1.25d | 5.12d |  | Sergio Moreno | 6h | 5.68h | 600 | 568.17 |
| 35 | 1.3.1 | Cubo: PEDIDOS | 3h | 2008-12-31 21:00 A | 2009-01-01 21:00 A | 29 | 100% |  | 2008-12-29 22:00 | 2008-12-31 21:00 | 5h |  |  | Sergio Moreno | 3h | 3h | 300 | 300 |
| 36 | 1.3.2 | Cubo Hojas de Ruta | 1d? | 2008-12-02 08:00 A | 2008-12-06 13:00 A |  | 100% |  |  |  |  |  |  |  |  |  |  |  |
| 37 | 1.3.3 | Cubo de Resumen de Preventa | 0.38d | 2008-12-02 08:00 A | 2008-12-05 08:02 A |  | 100% |  |  |  |  |  |  |  |  |  |  |  |
| 38 | 1.3.4 | Cubo de Visitas Palm | 0.38d | 2008-12-02 08:00 A | 2008-12-05 08:02 |  | 80% | 0.08d |  |  |  | 11.49d |  |  |  |  |  |  |
| 39 | 1.3.5 | Cubo de Rechazo de pedidos | 0.38d | 2008-12-02 08:00 A | 2008-12-05 08:02 |  | 50% | 0.19d |  |  |  | 11.49d |  |  |  |  |  |  |
| 40 | 1.4 | **Diseño de Informes en excel** | 0.25d | 2009-01-01 21:00 A | 2009-01-01 23:00 |  | 80% | 0.05d | 2009-01-02 20:00 | 2009-01-02 22:00 | 0.25d | 0.7d |  | Sergio Moreno | 4h | 3.2h | 400 | 320 |
| 41 | 1.4.1 | Layout de ejemplo | 2h | 2009-01-01 21:00 A | 2009-01-01 23:00 |  | 80% | 0.4h | 2009-01-02 20:00 | 2009-01-02 22:00 | 2h | 0.7d | 0d | Sergio Moreno | 2h | 1.6h | 200 | 160 |
| 42 | 1.5 | **Creacion de reportes adicionales en Reporting Services** | 0.75d | 2009-01-02 20:00 | 2009-01-03 23:00 |  |  |  | 2009-01-02 22:00 | 2009-01-07 22:00 | 1.5d | 0.7d |  | Sergio Moreno | 12h |  | 1,200 |  |
| 43 | 1.5.1 | Informe Clientes por fecha | 2h | 2009-01-02 20:00 | 2009-01-02 22:00 | 41 |  |  | 2009-01-02 22:00 | 2009-01-03 23:00 | 4h | 0.7d | 0d | Sergio Moreno | 2h |  | 200 |  |
| 44 | 1.5.2 | Informe a medida 2 | 2h | 2009-01-02 22:00 | 2009-01-03 21:00 | 43 |  |  | 2009-01-05 20:00 | 2009-01-06 21:00 | 4h | 0.7d | 0d | Sergio Moreno | 2h |  | 200 |  |
| 45 | 1.5.3 | Informe a medida 3 | 2h | 2009-01-03 21:00 | 2009-01-03 23:00 | 44 |  |  | 2009-01-06 21:00 | 2009-01-07 22:00 | 4h | 0.7d | 0d | Sergio Moreno | 2h |  | 200 |  |
| 46 | 1.6 | Instalacion y configuracion del nuevo servidor | 8h | 2009-01-05 20:00 A | 2009-01-07 22:00 | 45 | 70% | 2.4h | 2009-01-07 22:00 | 2009-01-10 21:00 | 8h | 0d |  | Sergio Moreno | 8h | 5.6h | 800 | 560 |
| 47 | 1.7 | Preparacion de Manual y Presentacion a los usuarios | 10h | 2009-01-07 22:00 | 2009-01-10 23:00 | 46 |  |  | 2009-01-10 21:00 | 2009-01-15 21:00 | 12h | 0d |  | Sergio Moreno | 10h |  | 1,000 |  |
| 48 | 1.8 | Presentacion y entrega de las capacidades de la nueva herramienta | 1h | 2009-01-12 20:00 | 2009-01-12 21:00 | 47 |  |  | 2009-01-15 21:00 | 2009-01-15 22:00 | 1h | 0d |  | Sergio Moreno | 1h |  | 100 |  |
| 49 | 1.9 | Capacitacion a usuarios finales para explotacion usando Excel 2007 | 6h | 2009-01-12 21:00 | 2009-01-14 21:00 | 48 |  |  | 2009-01-24 22:00 | 2009-02-03 22:00 | 24h | 0d |  | Sergio Moreno | 6h |  | 600 |  |
| 50 | 1.10 | Capacitacion a sistemas para mantenimiento de los flujos | 8h | 2009-01-14 21:00 | 2009-01-16 23:00 | 49 |  |  | 2009-02-03 22:00 | 2009-02-07 22:00 | 12h | 0d |  | Sergio Moreno | 8h |  | 800 |  |
